# ProjectRoadmate

Schedule from MS Project, 2008-07-22 to 2008-10-24, status date 2008-08-04, A marks actual dates.
alldatime

## Calendars

- Standard: Mon-Fri 08:00-12:00, 13:00-17:00; Sat-Sun off. Exceptions (off unless hours are given): 2008-08-25 to 2008-09-07.

## Resources

| Resource |
| --- |
| Amir Bashir |
| Carlos Crasborn |
| Dale Halliwell |
| Lucia Stewart |
| Scott Richards |
| Yizhang Yin |

## Schedule

| ID | WBS | Task | Type | Duration | Start | Finish | Predecessors | Complete | Remaining | Baseline start | Baseline finish | Baseline duration | Total slack | Free slack | Constraint | Deadline | Resources | Work | Actual work |
| --- | --- | --- | --- | --- | --- | --- | --- | --- | --- | --- | --- | --- | --- | --- | --- | --- | --- | --- | --- |
| 1 | 1 | **Prototype1** |  | 15d | 2008-07-22 A | 2008-08-12 |  | 74% | 3.91d | 2008-07-22 | 2008-08-12 | 15d | 44d |  |  |  |  | 286.4h | 260.4h |
| 2 | 1.1 | **Initial Analysis** |  | 6d | 2008-07-22 A | 2008-07-29 |  | 95% | 0.31d | 2008-07-22 | 2008-07-29 | 6d | 49.4d | 0d |  |  |  | 118.4h | 114h |
| 3 | 1.1.1 | Scope for Prorotype1 |  | 1d | 2008-07-22 A | 2008-07-22 A |  | 100% |  | 2008-07-22 | 2008-07-22 | 1d |  |  | start no earlier than 2008-07-22 |  | Amir Bashir [50%]; Carlos Crasborn [50%]; Dale Halliwell [50%]; Lucia Stewart [50%]; Scott Richards [50%]; Yizhang Yin [50%] | 24h | 24h |
| 4 | 1.1.2 | Project Name |  | 0.2d | 2008-07-22 A | 2008-07-22 A |  | 100% |  | 2008-07-22 | 2008-07-22 | 0.2d |  |  |  |  | Amir Bashir [25%]; Carlos Crasborn [25%]; Dale Halliwell [25%]; Lucia Stewart [25%]; Scott Richards [25%]; Yizhang Yin [25%] | 2.4h | 2.4h |
| 5 | 1.1.3 | Create Google Account |  | 0.2d | 2008-07-22 A | 2008-07-22 A |  | 100% |  | 2008-07-22 | 2008-07-22 | 0.2d |  |  |  |  | Amir Bashir [125%]; Carlos Crasborn [125%]; Dale Halliwell [125%]; Lucia Stewart [125%]; Scott Richards [125%]; Yizhang Yin [125%] | 12h | 12h |
| 6 | 1.1.4 | Use Cases |  | 1w | 2008-07-23 A | 2008-07-29 | 5 | 95% | 0.05w | 2008-07-23 | 2008-07-29 | 1w | 49.4d |  |  |  | Lucia Stewart [80%]; Dale Halliwell [20%]; Yizhang Yin [20%] | 24h | 22.8h |
| 7 | 1.1.5 | Domain Model |  | 1w | 2008-07-23 A | 2008-07-29 |  | 90% | 0.1w | 2008-07-23 | 2008-07-29 | 1w | 49.4d |  | start no earlier than 2008-07-23 |  | Dale Halliwell [80%] | 32h | 28.8h |
| 8 | 1.1.6 | RMMM |  | 3d | 2008-07-23 A | 2008-07-25 A |  | 100% |  | 2008-07-23 | 2008-07-25 | 3d |  |  | start no earlier than 2008-07-23 |  | Amir Bashir | 24h | 24h |
| 9 | 1.2 | **Design of Prototype1** |  | 6d | 2008-07-30 A | 2008-08-06 | 2 | 89% | 0.67d | 2008-07-30 | 2008-08-06 | 6d | 47d |  |  |  |  | 168h | 146.4h |
| 10 | 1.2.1 | Main page |  | 2d | 2008-07-30 A | 2008-07-31 | 2 | 90% | 0.2d | 2008-07-30 | 2008-07-31 | 2d | 50.7d | 0d |  |  | Amir Bashir | 16h | 14.4h |
| 11 | 1.2.2 | Base Template page |  | 3d | 2008-08-01 A | 2008-08-05 | 10 | 90% | 0.3d | 2008-08-01 | 2008-08-05 | 3d | 48d |  |  |  | Amir Bashir | 24h | 21.6h |
| 12 | 1.2.3 | Create Ride Offer page |  | 2d | 2008-07-30 A | 2008-07-31 A | 2 | 100% |  | 2008-07-30 | 2008-07-31 | 2d |  |  |  |  | Carlos Crasborn | 16h | 16h |
| 13 | 1.2.4 | Edit Ride Offer page |  | 2d | 2008-08-01 A | 2008-08-04 A | 12 | 100% |  | 2008-08-01 | 2008-08-04 | 2d |  |  |  |  | Carlos Crasborn | 16h | 16h |
| 14 | 1.2.5 | Search Ride Offers page |  | 2d | 2008-08-05 A | 2008-08-06 | 13 | 85% | 0.3d | 2008-08-05 | 2008-08-06 | 2d | 47d |  |  |  | Carlos Crasborn | 16h | 13.6h |
| 15 | 1.2.6 | View Ride Offer page |  | 2d | 2008-07-30 A | 2008-07-31 | 2 | 85% | 0.3d | 2008-07-30 | 2008-07-31 | 2d | 47.7d | 0d |  |  | Dale Halliwell | 16h | 13.6h |
| 16 | 1.2.7 | About page |  | 2d | 2008-08-01 A | 2008-08-04 | 15 | 80% | 0.4d | 2008-08-01 | 2008-08-04 | 2d | 46.1d | 0d |  |  | Dale Halliwell; Yizhang Yin | 32h | 25.6h |
| 17 | 1.2.8 | Support page |  | 2d | 2008-08-05 A | 2008-08-06 | 16 | 80% | 0.4d | 2008-08-05 | 2008-08-06 | 2d | 44.5d | 0d |  |  | Dale Halliwell; Yizhang Yin | 32h | 25.6h |
| 18 | 1.3 | Testing phase1 |  | 0.5w | 2008-08-07 | 2008-08-11 | 17 |  |  | 2008-08-07 | 2008-08-11 | 0.5w | 44.5d |  |  |  |  |  |  |
| 19 | 1.4 | Report1 |  | 1w | 2008-08-04 | 2008-08-08 |  |  |  | 2008-08-04 | 2008-08-08 | 1w | 0d |  | finish no earlier than 2008-08-08 | 2008-08-08 |  |  |  |
| 20 | 1.5 | Prototype1 Presentation | milestone | 0d | 2008-08-12 | 2008-08-12 |  |  |  | 2008-08-12 | 2008-08-12 | 0d | 14d | 1d | start no earlier than 2008-08-12 |  |  |  |  |
| 21 | 2 | Get Familiar with Python and Google API Engine |  | 16d? | 2008-07-22 A | 2008-08-12 |  | 55% | 7.2d? | 2008-07-22 | 2008-08-12 | 16d? | 23.5d | 0d | finish no earlier than 2008-08-12 |  |  |  |  |
| 22 | 3 | **Prototype2** |  | 19.5d | 2008-08-13 | 2008-09-23 | 20 |  |  | 2008-08-13 | 2008-09-23 | 19.5d | 13d |  |  |  |  |  |  |
| 23 | 3.1 | Scope of Prototype2 |  | 2d | 2008-08-13 | 2008-08-14 | 21 |  |  | 2008-08-13 | 2008-08-14 | 2d | 23.5d | 0d |  |  |  |  |  |
| 24 | 3.2 | Design of Prototype2 |  | 2.5w | 2008-08-15 | 2008-09-16 | 23 |  |  | 2008-08-15 | 2008-09-16 | 2.5w | 23.5d | 0d |  |  |  |  |  |
| 25 | 3.3 | Testing phase2 |  | 1w | 2008-09-16 | 2008-09-23 | 24 |  |  | 2008-09-16 | 2008-09-23 | 1w | 23.5d |  |  |  |  |  |  |
| 26 | 3.4 | Report2 |  | 1w | 2008-09-15 | 2008-09-19 |  |  |  | 2008-09-15 | 2008-09-19 | 1w | 0d |  | finish no earlier than 2008-09-19 | 2008-09-19 |  |  |  |
| 27 | 3.5 | Prototype2 Presentation | milestone | 0d | 2008-09-23 | 2008-09-23 |  |  |  | 2008-09-23 | 2008-09-23 | 0d | 7d | 0d | start no earlier than 2008-09-23 |  |  |  |  |

| ID | WBS | Task | Type | Duration | Start | Finish | Predecessors | Baseline start | Baseline finish | Baseline duration | Total slack | Free slack | Constraint | Deadline |
| --- | --- | --- | --- | --- | --- | --- | --- | --- | --- | --- | --- | --- | --- | --- |
| 28 | 4 | **Final Product** |  | 20d | 2008-09-23 | 2008-10-21 | 27 | 2008-09-23 | 2008-10-21 | 20d | 4d |  |  |  |
| 29 | 4.1 | Scope of Final version |  | 2d | 2008-09-23 | 2008-09-24 | 27 | 2008-09-23 | 2008-09-24 | 2d | 7d | 1d |  |  |
| 30 | 4.2 | Design of Final version |  | 2w | 2008-09-26 | 2008-10-09 | 29 | 2008-09-26 | 2008-10-09 | 2w | 6d | 0d | finish no earlier than 2008-10-09 |  |
| 31 | 4.3 | Testing Final Phase |  | 1w | 2008-10-10 | 2008-10-16 | 30 | 2008-10-10 | 2008-10-16 | 1w | 6d |  | start no earlier than 2008-10-09 |  |
| 32 | 4.4 | Final Documentation |  | 1w | 2008-10-13 | 2008-10-17 |  | 2008-10-13 | 2008-10-17 | 1w | 0d |  | finish no earlier than 2008-10-17 | 2008-10-17 |
| 33 | 4.5 | Presentation & Demonstration | milestone | 0d | 2008-10-21 | 2008-10-21 |  | 2008-10-21 | 2008-10-21 | 0d | 4d |  | start no earlier than 2008-10-21 |  |
| 34 | 5 | Reflection Essay |  | 4d? | 2008-10-21 | 2008-10-24 |  | 2008-10-21 | 2008-10-24 | 4d? | 0d |  | finish no earlier than 2008-10-24 |  |
